Schedule from MS Project, 2019-04-26 to 2019-10-09, status date 2019-05-07, costs in ¥, A marks actual dates.

## Calendars

- 标准: Mon-Fri 08:00-12:00, 13:00-17:00; Sat-Sun off.

## Resources

| Resource | Rate |
| --- | --- |
| Belinda | 150 |
| Tom | 150 |
| Daisy | 150 |
| Gavin | 150 |
| Purdy | 150 |
| Justin | 150 |
| Spencer | 150 |
| Amanda | 150 |

## Schedule

| ID | Task | Duration | Start | Finish | Predecessors | Complete | Remaining | Baseline start | Baseline finish | Baseline duration | Baseline 1 start | Baseline 1 finish | Total slack | Free slack | Constraint | Resources | Work | Actual work | Cost | Baseline cost | Actual cost |
| --- | --- | --- | --- | --- | --- | --- | --- | --- | --- | --- | --- | --- | --- | --- | --- | --- | --- | --- | --- | --- | --- |
| 1 | IoE/P/1 specify overall design | 34d | 2019-04-26 A | 2019-06-12 A |  | 100% |  | 2019-04-26 | 2019-06-12 | 34d | 2019-04-26 | 2019-05-31 |  |  | start no earlier than 2019-04-26 | Amanda | 272h | 272h | 40,800 | 40,800 | 40,800 |
| 2 | IoE/P/2 specify module A | 20d | 2019-06-13 A | 2019-07-10 A | 1 | 100% |  | 2019-06-13 | 2019-07-10 | 20d | 2019-06-01 | 2019-06-21 |  |  |  | Daisy | 160h | 160h | 24,000 | 24,000 | 24,000 |
| 3 | IoE/P/3 specify module B | 15d | 2019-07-18 A | 2019-08-07 A | 1 | 100% |  | 2019-07-18 | 2019-08-07 | 15d | 2019-06-13 | 2019-06-30 |  |  |  | Belinda | 120h | 120h | 18,000 | 18,000 | 18,000 |
| 4 | IoE/P/4 specify module C | 25d | 2019-06-13 A | 2019-07-17 A | 1 | 100% |  | 2019-06-13 | 2019-07-17 | 25d | 2019-05-31 | 2019-06-30 |  |  |  | Belinda | 200h | 200h | 30,000 | 30,000 | 30,000 |
| 5 | IoE/P/5 specify module D | 15d | 2019-06-13 A | 2019-07-03 A | 1 | 100% |  | 2019-06-13 | 2019-07-03 | 15d | 2019-05-31 | 2019-06-15 |  |  |  | Tom | 120h | 120h | 18,000 | 18,000 | 18,000 |
| 6 | IoE/P/6 check specifications | 2d | 2019-08-08 A | 2019-08-09 | 2, 3, 4, 5 | 75% | 0.5d | 2019-08-08 | 2019-08-09 | 2d | 2019-07-18 | 2019-07-22 | 0d |  |  | Amanda | 16h | 12h | 2,400 | 2,400 | 1,800 |
| 7 | IoE/P/7 design module A | 7d | 2019-08-12 | 2019-08-20 | 6 |  |  | 2019-08-09 | 2019-08-17 | 7d | 2019-07-31 | 2019-08-07 | 0d |  |  | Daisy | 56h |  | 8,400 | 8,400 |  |
| 8 | IoE/P/8 design module B | 6d | 2019-08-12 | 2019-08-19 | 6 |  |  | 2019-08-09 | 2019-08-17 | 6d | 2019-07-31 | 2019-08-07 | 3d | 0d |  | Tom | 48h |  | 7,200 | 7,200 |  |
| 9 | IoE/P/9 design module C | 4d | 2019-08-12 | 2019-08-15 | 6 |  |  | 2019-08-09 | 2019-08-12 | 4d | 2019-07-31 | 2019-08-07 | 18d | 0d |  | Belinda | 32h |  | 4,800 | 4,800 |  |
| 10 | IoE/P/10 design module D | 4d | 2019-08-20 | 2019-08-23 | 6 |  |  | 2019-08-09 | 2019-08-12 | 4d | 2019-07-31 | 2019-08-07 | 2d | 0d |  | Tom | 32h |  | 4,800 | 4,800 |  |
| 11 | IoE/P/11 code/test module A | 30d | 2019-08-21 | 2019-10-01 | 7 |  |  | 2019-08-21 | 2019-10-01 | 30d | 2019-08-07 | 2019-09-05 | 0d |  |  | Gavin | 240h |  | 36,000 | 36,000 |  |
| 12 | IoE/P/12 code/test module B | 28d | 2019-08-20 | 2019-09-26 | 8 |  |  | 2019-08-20 | 2019-09-26 | 28d | 2019-08-08 | 2019-09-01 | 3d |  |  | Purdy | 224h |  | 33,600 | 33,600 |  |
| 13 | IoE/P/13 code/test module C | 15d | 2019-08-16 | 2019-09-05 | 9 |  |  | 2019-08-16 | 2019-09-05 | 15d | 2019-08-07 | 2019-08-31 | 18d |  |  | Justin | 120h |  | 18,000 | 18,000 |  |
| 14 | IoE/P/14 code/test module D | 25d | 2019-08-26 | 2019-09-27 | 10 |  |  | 2019-08-26 | 2019-09-27 | 25d | 2019-08-22 | 2019-09-25 | 2d |  |  | Spencer | 200h |  | 30,000 | 30,000 |  |
| 15 | IoE/P/15 system integration | 6d | 2019-10-02 | 2019-10-09 | 11, 12, 13, 14 |  |  | 2019-10-02 | 2019-10-09 | 6d | 2019-10-02 | 2019-10-09 | 0d |  | start no earlier than 2019-09-11 | Belinda | 48h |  | 7,200 | 7,200 |  |
